Schedule from MS Project, 2011-01-13 to 2011-11-24, A marks actual dates.

## Calendars

- Standard: Mon-Fri 08:00-12:00, 13:00-17:00; Sat-Sun off.

## Resources

| Resource |
| --- |
| not scheduled |
| Greg |
| Prasad |
| Dan |
| v |
| 2/1/2012 8:00 AM |

## Schedule

| ID | WBS | Task | Duration | Start | Finish | Predecessors | Complete | Remaining | Total slack | Free slack | Constraint | Text1 |
| --- | --- | --- | --- | --- | --- | --- | --- | --- | --- | --- | --- | --- |
| 1 | 1 | Assumes 1 FTE developer on average available for dev | 1d? | 2011-01-13 | 2011-01-13 |  |  |  | 264d |  |  |  |
| 3 | 2 | 4.1.3 release (fix for GF 27529) | 8d | 2011-02-24 A | 2011-03-07 |  | 50% | 4d | 188d |  | start no earlier than 2011-02-24 |  |
| 4 | 3 | Apply new SDK test generation to 4.2 | 3d | 2011-02-24 A | 2011-02-28 A |  | 100% |  |  |  | start no earlier than 2011-02-24 | 5a |
| 5 | 4 | Improve SDK test generation | 5d | 2011-03-01 | 2011-03-07 | 4 |  |  | 188d |  |  | 5b |
| 6 | 5 | Document on hand-generating ILS filters | 3d | 2011-03-07 | 2011-03-09 |  |  |  | 186d |  | start no earlier than 2011-03-07 | 10 |
| 7 | 6 | **UPT improvement plan** | 26d? | 2011-03-01 | 2011-04-05 |  |  |  | 48d |  | start no earlier than 2011-03-01 |  |
| 8 | 6.1 | initial plan with estimates | 4d | 2011-03-01 | 2011-03-04 |  |  |  | 48d | 0d |  |  |
| 9 | 6.2 | user review | 10d | 2011-03-07 | 2011-03-18 | 8 |  |  | 48d | 0d |  |  |
| 10 | 6.3 | plan updates | 2d | 2011-03-21 | 2011-03-22 | 9 |  |  | 48d | 0d |  |  |
| 11 | 6.4 | approval by TRB | 10d? | 2011-03-23 | 2011-04-05 | 10 |  |  | 48d |  |  |  |
| 12 | 7 | **technology stack upgrade** | 70d | 2011-03-07 | 2011-06-10 |  |  |  | 0d |  | start no earlier than 2011-03-07 |  |
| 13 | 7.1 | QA preparation | 20d | 2011-03-07 | 2011-04-01 |  |  |  | 6d | 0d |  |  |
| 14 | 7.2 | CSM/UPT/CGMM | 10d | 2011-03-07 | 2011-03-18 |  |  |  | 0d |  |  |  |
| 15 | 7.3 | CSM/UPT/CGMM QA | 5d | 2011-04-04 | 2011-04-08 | 14, 13 |  |  | 6d | 0d |  |  |
| 16 | 7.4 | CLM/LLT | 5d | 2011-03-21 | 2011-03-25 | 14 |  |  | 0d |  |  |  |
| 17 | 7.5 | CLM/LLT QA | 5d | 2011-04-11 | 2011-04-15 | 16, 15 |  |  | 6d | 0d |  |  |
| 18 | 7.6 | XMI Handler | 2d | 2011-03-28 | 2011-03-29 | 16 |  |  | 0d |  |  |  |
| 19 | 7.7 | XMI Handler QA | 3d | 2011-04-18 | 2011-04-20 | 18, 17 |  |  | 6d | 0d |  |  |
| 20 | 7.8 | ISO 21090 | 5d | 2011-03-30 | 2011-04-05 | 18 |  |  | 0d |  |  |  |
| 21 | 7.9 | ISO 21090 QA | 3d | 2011-04-21 | 2011-04-25 | 20, 19 |  |  | 6d |  |  |  |
| 22 | 7.10 | SDK | 20d | 2011-04-06 | 2011-05-03 | 20, 18 |  |  | 0d |  |  |  |
| 23 | 7.11 | SDK QA | 15d | 2011-05-04 | 2011-05-24 | 22, 21 |  |  | 0d |  |  |  |
| 24 | 7.12 | Workbench | 5d | 2011-05-04 | 2011-05-10 | 22 |  |  | 10d |  |  |  |
| 25 | 7.13 | Workbench QA | 3d | 2011-05-25 | 2011-05-27 | 24, 23 |  |  | 0d |  |  |  |
| 26 | 7.14 | Release activities | 10d | 2011-05-30 | 2011-06-10 | 25 |  |  | 0d |  |  |  |

| ID | WBS | Task | Type | Duration | Start | Finish | Predecessors | Total slack | Text1 |
| --- | --- | --- | --- | --- | --- | --- | --- | --- | --- |
| 27 | 8 | **UPT improvements** |  | 78d? | 2011-06-10 | 2011-09-28 | 7, 12 | 0d |  |
| 28 | 8.1 | **CSM lockout issues, assume include here, needs more direction** |  | 0d | 2011-06-10 | 2011-06-10 |  | 78d |  |
| 29 | 8.1.1 | GF 29450 CSM lockout | milestone | 0d | 2011-06-10 | 2011-06-10 |  | 78d | 16 |
| 30 | 8.1.2 | GF 30019 Disable lockouts (fix with GF 29450) | milestone | 0d | 2011-06-10 | 2011-06-10 |  | 78d | 17 |
| 31 | 8.2 | GF 30372 Note "must replace" properties in sample properties files | milestone | 0d | 2011-06-10 | 2011-06-10 |  | 78d | 18 |
| 32 | 8.3 | GF 30433 Synchronization with app when adding or modifying groups | milestone | 0d | 2011-06-10 | 2011-06-10 |  | 78d | 19 |
| 33 | 8.4 | GF 30434 Improved error messages | milestone | 0d | 2011-06-10 | 2011-06-10 |  | 78d | 20 |
| 34 | 8.5 | GF 30435 Allow users to change passwords (instead of admin) | milestone | 0d | 2011-06-10 | 2011-06-10 |  | 78d | 21 |
| 35 | 8.6 | GF 30436 Better LDAP integration | milestone | 0d | 2011-06-10 | 2011-06-10 |  | 78d | 22 |
| 36 | 8.7 | GF 30437 Improve UPT documentation and examples | milestone | 0d | 2011-06-10 | 2011-06-10 |  | 78d | 23 |
| 37 | 8.8 | CSM lockout issues? |  | 1d? | 2011-06-13 | 2011-06-13 |  | 77d | 16,17? |
| 38 | 8.9 | UPT itr 1 - dev |  | 20d | 2011-06-13 | 2011-07-08 |  | 0d |  |
| 39 | 8.10 | UPT itr 1 - QA |  | 10d | 2011-07-11 | 2011-07-22 | 38 | 48d |  |
| 40 | 8.11 | UPT itr 2 - dev |  | 20d | 2011-07-11 | 2011-08-05 | 38 | 0d |  |
| 41 | 8.12 | UPT itr 2 - QA |  | 10d | 2011-08-08 | 2011-08-19 | 40 | 28d |  |
| 42 | 8.13 | UPT itr 3 - dev |  | 20d | 2011-08-08 | 2011-09-02 | 40 | 0d |  |
| 43 | 8.14 | UPT itr 3 - QA |  | 10d | 2011-09-05 | 2011-09-16 | 42 | 0d |  |
| 44 | 8.15 | UPT formal release |  | 8d | 2011-09-19 | 2011-09-28 | 43 | 0d |  |
| 45 | 9 | Exception handling GF 30382 |  | 1d | 2011-09-29 | 2011-09-29 | 27 | 0d | 11 |
| 46 | 10 | ISO/postgres GF 30268 |  | 20d? | 2011-09-30 | 2011-10-27 | 45 | 0d | 14 |
| 47 | 11 | GF 29975 Support case sensitivity on a field-by-field basis - NOT APPROVED |  | 1d? | 2011-10-28 | 2011-10-28 | 46 | 0d | 15 |
| 48 | 12 | documentation improvements |  | 15d | 2011-10-31 | 2011-11-18 | 47 | 0d |  |
| 49 | 13 | 508 compliance review and plan |  | 1d? | 2011-11-21 | 2011-11-21 | 48 | 0d |  |
| 50 | 14 | ECCF compliance review and plan |  | 1d? | 2011-11-22 | 2011-11-22 | 49 | 0d |  |
| 51 | 15 | Effect of NCI CBIIT’s Enterprise Security Program on CSM |  | 1d? | 2011-11-23 | 2011-11-23 | 50 | 0d |  |
| 52 | 16 | Effect of NCI CBIIT’s Enterprise Security Program on CLM |  | 1d? | 2011-11-24 | 2011-11-24 | 51 | 0d |  |
